# BS Beauty Academy

Schedule from ProjectLibre, 2025-03-18 to 2025-06-24, 1 hours a day.

## Calendars

- Padrão: Mon-Fri 08:00-09:00; Sat-Sun off.

## Resources

| Resource | Rate |
| --- | --- |
| Não atribuído |  |
| Sumário |  |
| Recursos Humanos |  |
| Gestão |  |
| Alyson | 75 |
| Desenvolvimento |  |
| Bruno | 31.25 |
| Eliel | 31.25 |
| Henrique | 31.25 |
| Henrriky | 93.75 |
| Documentação |  |
| Giovanna | 18.75 |
| Recursos Materiais |  |
| Computador |  |

## Schedule

| ID | WBS | Task | Duration | Start | Finish | Predecessors | Complete | Constraint | Resources |
| --- | --- | --- | --- | --- | --- | --- | --- | --- | --- |
| 1 | 1 | **Sistema para Gerenciamento de Salão de Beleza** | 70d? | 2025-03-18 | 2025-06-24 |  | 11% |  |  |
| 2 | 1.1 | Início do Projeto | 0d | 2025-03-18 | 2025-03-18 |  |  | start no earlier than 2025-03-18 |  |
| 4 | 1.2 | **Etapa 1: Definição do Tema** | 16d | 2025-03-18 | 2025-04-08 | 2SS | 100% |  |  |
| 5 | 1.2.1 | Definição da equipe | 2d | 2025-03-18 | 2025-03-19 |  | 100% |  | Alyson |
| 6 | 1.2.2 | Busca da entidade parceira | 2d | 2025-03-20 | 2025-03-21 | 5 | 100% |  | Henrriky |
| 7 | 1.2.3 | Entrevista e alinhamento com entidade parceira | 6d | 2025-03-24 | 2025-03-31 | 6 | 100% |  | Alyson [50%]; Henrriky [50%] |
| 8 | 1.2.4 | Elaboração e apresentação do tema | 6d | 2025-04-01 | 2025-04-08 | 7 | 100% | must finish on 2025-04-09 | Alyson [16.67%]; Bruno [16.67%]; Eliel [16.67%]; Henrique [16.67%]; Henrriky [16.67%]; Giovanna [16.67%] |
| 9 | 1.2.5 | Aprovação do Tema | 0d | 2025-04-08 | 2025-04-08 | 8, 10 |  |  |  |
| 10 | 1.2.6 | Preenchimento da 1ª tabela de autoavaliação | 14d | 2025-03-20 | 2025-04-08 |  | 100% | as late as possible | Alyson [16.67%]; Bruno [16.67%]; Eliel [16.67%]; Henrique [16.67%]; Henrriky [16.67%]; Giovanna [16.67%] |
| 12 | 1.3 | **Etapa 2: Desenho da Aplicação** | 15d | 2025-04-09 | 2025-04-29 | 9SS |  |  |  |
| 13 | 1.3.1 | **Elicitação de Requisitos** | 15d | 2025-04-09 | 2025-04-29 |  |  |  |  |
| 14 | 1.3.1.1 | Coleta de informações | 7d | 2025-04-09 | 2025-04-17 |  |  |  |  |
| 15 | 1.3.1.2 | Análise de requisitos | 3d | 2025-04-18 | 2025-04-22 | 14 |  |  |  |
| 16 | 1.3.1.3 | Definição formal dos requisitos | 3d | 2025-04-23 | 2025-04-25 | 15 |  |  |  |
| 17 | 1.3.1.4 | Validação dos requisitos | 2d | 2025-04-28 | 2025-04-29 | 16 |  |  |  |
| 18 | 1.3.2 | **Confecção de Diagramas** | 14d | 2025-04-09 | 2025-04-29 |  |  |  |  |
| 19 | 1.3.2.1 | Estudo de diagramas | 7d | 2025-04-09 | 2025-04-17 |  |  |  |  |
| 20 | 1.3.2.2 | Criação do diagrama de componentes | 7d | 2025-04-18 | 2025-04-28 | 19 |  |  |  |
| 21 | 1.3.2.3 | Criação do diagrama de implantação | 7d | 2025-04-18 | 2025-04-28 | 19 |  |  |  |
| 22 | 1.3.2.4 | Entrega do Desenho da Aplicação | 0d | 2025-04-29 | 2025-04-29 | 20, 21, 23 |  | must finish on 2025-04-29 |  |
| 23 | 1.3.2.5 | Preenchimento da 2ª tabela de autoavaliação | 14d | 2025-04-09 | 2025-04-28 |  |  |  |  |
| 25 | 1.4 | **Etapa 3: Estudo de Plataformas e Tecnologias** | 29d | 2025-04-09 | 2025-05-20 | 9SS |  |  |  |
| 26 | 1.4.1 | Levantamento de requisitos técnicos | 3d | 2025-04-09 | 2025-04-11 |  |  |  |  |
| 27 | 1.4.2 | Pesquisa de tecnologias e ferramentas de desenvolvimento | 26d | 2025-04-14 | 2025-05-19 | 26 |  |  |  |
| 28 | 1.4.3 | Avaliação de banco de dados | 26d | 2025-04-14 | 2025-05-19 | 26 |  |  |  |
| 29 | 1.4.4 | Análise de ferramentas de versionamento | 26d | 2025-04-14 | 2025-05-19 | 26 |  |  |  |
| 30 | 1.4.5 | Pesquisa de plataformas de deploy | 26d | 2025-04-14 | 2025-05-19 | 26 |  |  |  |
| 31 | 1.4.6 | Definição da arquitetura do sistema | 26d | 2025-04-14 | 2025-05-19 | 26 |  |  |  |
| 32 | 1.4.7 | Avaliação de ferramentas de gerenciamento de projeto | 26d | 2025-04-14 | 2025-05-19 | 26 |  |  |  |
| 33 | 1.4.8 | Prova de Conceito | 0d | 2025-05-20 | 2025-05-20 | 27, 28, 29, 30, 31, 32, 34 |  | must finish on 2025-05-20 |  |
| 34 | 1.4.9 | Preenchimento da 3ª tabela de autoavaliação | 29d | 2025-04-09 | 2025-05-19 |  |  |  |  |

| ID | WBS | Task | Duration | Start | Finish | Predecessors | Constraint | Resources |
| --- | --- | --- | --- | --- | --- | --- | --- | --- |
| 36 | 1.5 | **Etapa 4: Desenvolvimento de Software** | 54d? | 2025-04-09 | 2025-06-24 | 9SS |  |  |
| 37 | 1.5.1 | Modelagem do Banco de Dados | 1d? | 2025-04-09 | 2025-04-09 |  |  |  |
| 38 | 1.5.2 | Implementação do Back-End | 1d? | 2025-04-09 | 2025-04-09 |  |  |  |
| 39 | 1.5.3 | Implementação do Front-End | 1d? | 2025-04-09 | 2025-04-09 |  |  |  |
| 40 | 1.5.4 | Deploy | 1d? | 2025-04-09 | 2025-04-09 |  |  |  |
| 41 | 1.5.5 | Apresentação do MVP | 0d | 2025-06-24 | 2025-06-24 |  | must finish on 2025-06-24 |  |
| 43 | 1.6 | **Etapa 5: Documentação** | 70d | 2025-03-18 | 2025-06-24 | 2SS |  |  |
| 44 | 1.6.1 | Criação do projeto no Overleaf | 2d | 2025-03-18 | 2025-03-19 |  |  |  |
| 45 | 1.6.2 | **Tópicos da Documentação** | 67d | 2025-03-20 | 2025-06-20 | 44 |  |  |
| 46 | 1.6.2.1 | Produção do tópico "Introdução" | 67d | 2025-03-20 | 2025-06-20 | 6SS |  | Giovanna [10%] |
| 47 | 1.6.2.2 | Produção do tópico "Revisão da Literatura" | 59d | 2025-04-01 | 2025-06-20 | 8SS |  | Giovanna [10%] |
| 48 | 1.6.2.3 | Produção do tópico "Gestão do Projeto" | 67d | 2025-03-20 | 2025-06-20 | 5SS |  | Alyson [10%] |
| 49 | 1.6.2.4 | **Desenvolvimento do Projeto** | 52d | 2025-04-10 | 2025-06-20 | 12SS, 25SS, 36SS | start no earlier than 2025-04-10 |  |
| 50 | 1.6.2.4.1 | Produção do tópico "Escopo do Projeto" | 52d | 2025-04-10 | 2025-06-20 | 13SS |  | Bruno [10%] |
| 51 | 1.6.2.4.2 | Produção do tópico "Histórias de Usuários" | 52d | 2025-04-10 | 2025-06-20 | 13SS |  | Bruno [10%] |
| 52 | 1.6.2.4.3 | Produção do tópico "Arquitetura" | 52d | 2025-04-10 | 2025-06-20 | 18SS |  | Henrriky [10%] |
| 53 | 1.6.2.4.4 | Produção do tópico "Tecnologias" | 52d | 2025-04-10 | 2025-06-20 | 25SS |  | Henrriky [10%] |
| 54 | 1.6.2.4.5 | Produção do tópico "Testes e Manutenibildade" | 52d | 2025-04-10 | 2025-06-20 | 36SS |  | Henrique [10%] |
| 55 | 1.6.2.4.6 | Produção do tópico "Segurança, Privacidade e Legislação" | 52d | 2025-04-10 | 2025-06-20 | 36SS |  | Eliel [10%] |
| 56 | 1.6.2.4.7 | Produção do tópico "Modelo de Banco de Dados" | 52d | 2025-04-10 | 2025-06-20 | 36SS |  | Eliel [10%] |
| 57 | 1.6.2.4.8 | Produção do tópico "Duração / Cronograma" | 52d | 2025-04-10 | 2025-06-20 |  |  | Henrique [10%] |
| 58 | 1.6.2.4.9 | Produção do tópico "Viabilidade Financeira" | 42d | 2025-04-10 | 2025-06-06 | 25SS |  | Alyson [10%] |
| 59 | 1.6.2.5 | Produção do tópico "Considerações Finais" | 10d | 2025-06-09 | 2025-06-20 | 58 |  | Giovanna [10%] |
| 60 | 1.6.3 | Supervisão do documento | 67d | 2025-03-20 | 2025-06-20 | 45SS |  | Giovanna [10%] |
| 61 | 1.6.4 | Produção do "Diário de Bordo" do projeto | 69d | 2025-03-18 | 2025-06-20 |  |  | Giovanna [10%] |
| 62 | 1.6.5 | Entrega da Documentação Final | 0d | 2025-06-24 | 2025-06-24 | 60, 63 | must finish on 2025-06-24 |  |
| 63 | 1.6.6 | Preenchimento da 4ª tabela de autoavaliação | 70d | 2025-03-18 | 2025-06-23 |  |  |  |
| 65 | 1.7 | Fim do Projeto | 0d | 2025-06-24 | 2025-06-24 | 62 |  |  |
